# MS Project interim 3_B1

Schedule from MS Project, 2016-01-04 to 2018-01-30, status date 2016-04-01, costs in $, A marks actual dates.

## Calendars

- Standard: Mon-Fri 08:00-12:00, 13:00-17:00; Sat-Sun off. Exceptions (off unless hours are given): 2016-05-30 (Memorial Day), 2016-07-04 (Independence Day), 2016-09-05 (Labor Day), 2016-11-24 (Thanksgiving Day), 2016-12-23 to 2016-12-27 (Christmas), 2017-01-02 (New Year), 2017-05-29 (Memorial Day), 2017-07-04 (Independence Day), 2017-09-04 (Labor Day), 2017-11-23 (Thanksgiving Day), 2017-12-25 (Christmas), 2018-01-01 (New Year).

## Resources

| Resource | Group | Rate | Cost per use |
| --- | --- | --- | --- |
| Design | R&D | 100 |  |
| Development | R&D | 70 |  |
| Documentation | R&D | 60 |  |
| Assembly/test | R&D | 70 |  |
| Purchasing | Procurement | 40 |  |
| External Teams |  | 120 |  |
| BR |  |  | 44540 |
| MR |  |  | 133620 |

## Schedule

| ID | WBS | Task | Type | Duration | Start | Finish | Predecessors | Complete | Remaining | Baseline start | Baseline finish | Baseline duration | Total slack | Free slack | Resources | Work | Actual work | Cost | Baseline cost | Actual cost |
| --- | --- | --- | --- | --- | --- | --- | --- | --- | --- | --- | --- | --- | --- | --- | --- | --- | --- | --- | --- | --- |
| 1 | 1 | **Conveyor Belt Project** |  | 528d | 2016-01-04 A | 2018-01-30 |  | 12% | 462.9d | 2016-01-04 | 2018-02-01 | 530d | 0d |  |  | 13912h | 1784h | 1,225,440 | 1,229,360 | 151,680 |
| 2 | 1.1 | **Hardware** |  | 441d | 2016-02-05 A | 2017-10-31 |  | 14% | 378.24d | 2016-02-05 | 2017-11-06 | 445d | 2d |  |  | 4120h | 592h | 319,600 | 326,400 | 50,320 |
| 3 | 1.1.1 | Start hardware development | milestone | 0d | 2016-02-05 | 2016-02-05 | 25 |  |  | 2016-02-05 | 2016-02-05 |  | 38d | 1d |  |  |  |  |  |  |
| 4 | 1.1.2 | Hardware specifications |  | 45d | 2016-02-09 A | 2016-04-11 | 3 | 82% | 8d | 2016-02-08 | 2016-04-15 | 50d | 0d |  | Development; Design | 720h | 592h | 61,200 | 68,000 | 50,320 |
| 5 | 1.1.3 | Hardware design |  | 70d | 2016-04-12 | 2016-07-20 | 4 |  |  | 2016-04-18 | 2016-07-26 | 70d | 0d |  | Design; Development | 1120h |  | 95,200 | 95,200 |  |
| 6 | 1.1.4 | Hardware Documentation |  | 30d | 2016-07-21 | 2016-08-31 | 5 |  |  | 2016-07-27 | 2016-09-07 | 30d | 0d |  | Documentation; Design | 480h |  | 38,400 | 38,400 |  |
| 7 | 1.1.5 | Prototypes |  | 80d | 2016-11-11 | 2017-03-09 | 26 |  |  | 2016-11-17 | 2017-03-15 | 80d | 50d |  | Assembly/test; Development | 1280h |  | 89,600 | 89,600 |  |
| 8 | 1.1.6 | Order circuit boards |  | 5d | 2017-06-26 | 2017-06-30 | 27 |  |  | 2017-06-30 | 2017-07-07 | 5d | 2d | 0d | Purchasing | 40h |  | 1,600 | 1,600 |  |
| 9 | 1.1.7 | Assemble preproduction models |  | 30d | 2017-09-20 | 2017-10-31 | 8FS+50d |  |  | 2017-09-26 | 2017-11-06 | 30d | 2d |  | Assembly/test; Development | 480h |  | 33,600 | 33,600 |  |
| 10 | 1.2 | **Operating system** |  | 441d | 2016-02-08 A | 2017-10-31 |  | 14% | 378.97d | 2016-03-21 | 2017-11-06 | 415d | 2d |  |  | 4600h | 720h | 331,200 | 333,600 | 58,480 |
| 11 | 1.2.1 | Kernel specifications |  | 25d | 2016-02-08 A | 2016-03-11 A | 25 | 100% |  | 2016-03-21 | 2016-04-15 | 20d |  |  | Design | 200h | 200h | 20,000 | 16,000 | 20,000 |
| 12 | 1.2.2 | **Drivers** |  | 300d | 2016-03-15 A | 2017-05-18 |  | 6% | 283.04d | 2016-04-18 | 2017-05-24 | 280d | 0d |  |  | 2640h | 208h | 184,800 | 184,800 | 14,560 |
| 13 | 1.2.2.1 | Disk drivers |  | 100d | 2016-03-15 A | 2016-08-03 | 11 | 13% | 87d | 2016-04-18 | 2016-09-07 | 100d | 20d |  | Assembly/test; Development | 1600h | 208h | 112,000 | 112,000 | 14,560 |
| 14 | 1.2.2.2 | Serial I/O drivers |  | 130d | 2016-11-11 | 2017-05-18 | 26 |  |  | 2016-11-17 | 2017-05-24 | 130d | 0d |  | Development | 1040h |  | 72,800 | 72,800 |  |
| 15 | 1.2.3 | Memory management |  | 90d | 2016-03-15 A | 2016-07-20 | 11 | 14% | 77d | 2016-04-18 | 2016-08-23 | 90d | 30d |  | Development | 720h | 104h | 50,400 | 50,400 | 7,280 |
| 16 | 1.2.4 | Operating system documentation |  | 20d | 2016-03-15 A | 2016-04-11 | 11 | 65% | 7d | 2016-05-16 | 2016-06-20 | 25d | 100d |  | Design; Documentation | 320h | 208h | 25,600 | 32,000 | 16,640 |
| 17 | 1.2.5 | Network interface |  | 90d | 2017-06-26 | 2017-10-31 | 27 |  |  | 2017-06-30 | 2017-11-06 | 90d | 2d |  | Development | 720h |  | 50,400 | 50,400 |  |
| 18 | 1.3 | **Utilities** |  | 422d | 2016-03-08 A | 2017-11-02 |  | 7% | 390.74d | 2016-02-08 | 2017-11-06 | 445d | 0d |  |  | 2232h | 272h | 187,280 | 182,000 | 22,880 |
| 19 | 1.3.1 | Utilities specifications |  | 16d | 2016-03-08 A | 2016-03-29 A | 25 | 100% |  | 2016-02-08 | 2016-02-26 | 15d |  |  | Development; Design | 256h | 256h | 21,760 | 20,400 | 21,760 |
| 20 | 1.3.2 | Routine utilities |  | 60d | 2016-03-30 | 2016-06-22 | 19 |  |  | 2016-02-29 | 2016-05-20 | 60d | 49d |  | External Teams | 480h |  | 57,600 | 57,600 |  |
| 21 | 1.3.3 | Complex utilities |  | 87d | 2016-03-30 A | 2016-08-01 | 19 | 2% | 85d | 2016-05-16 | 2016-09-07 | 80d | 22d |  | Development | 696h | 16h | 48,720 | 44,800 | 1,120 |
| 22 | 1.3.4 | Utilities documentation |  | 20d | 2016-05-18 | 2016-06-15 | 19 |  |  | 2016-04-18 | 2016-05-13 | 20d | 54d |  | Documentation; Design | 320h |  | 25,600 | 25,600 |  |
| 23 | 1.3.5 | Shell |  | 60d | 2017-08-10 | 2017-11-02 | 27 |  |  | 2017-08-14 | 2017-11-06 | 60d | 0d |  | Development | 480h |  | 33,600 | 33,600 |  |
| 24 | 1.4 | **System integration** |  | 528d | 2016-01-04 A | 2018-01-30 |  | 12% | 465.14d | 2016-01-04 | 2018-02-01 | 530d | 0d |  |  | 2960h | 200h | 209,200 | 209,200 | 20,000 |
| 25 | 1.4.1 | Architectural decisions |  | 25d | 2016-01-04 A | 2016-02-05 A |  | 100% |  | 2016-01-04 | 2016-02-05 | 25d |  |  | Design | 200h | 200h | 20,000 | 20,000 | 20,000 |
| 26 | 1.4.2 | Integration first phase |  | 50d | 2016-09-01 | 2016-11-10 | 13, 15, 16, 20, 21, 22, 6 |  |  | 2016-09-08 | 2016-11-16 | 50d | 0d |  | Assembly/test; Development | 800h |  | 56,000 | 56,000 |  |
| 27 | 1.4.3 | System hard/software test |  | 25d | 2017-05-19 | 2017-06-23 | 14, 7 |  |  | 2017-05-25 | 2017-06-29 | 25d | 0d |  | Assembly/test | 200h |  | 14,000 | 14,000 |  |
| 28 | 1.4.4 | Project documentation |  | 50d | 2017-08-24 | 2017-11-02 | 27 |  |  | 2017-08-28 | 2017-11-06 | 50d | 0d |  | Documentation; Development | 800h |  | 52,000 | 52,000 |  |
| 29 | 1.4.5 | Integration acceptance testing |  | 60d | 2017-11-03 | 2018-01-30 | 17, 23, 28, 9 |  |  | 2017-11-07 | 2018-02-01 | 60d | 0d |  | Assembly/test; Development | 960h |  | 67,200 | 67,200 |  |
| 30 | 1.4.6 | Complete system integration | milestone | 0d | 2018-01-30 | 2018-01-30 | 29 |  |  | 2018-02-01 | 2018-02-01 |  | 0d |  |  |  |  |  |  |  |

| ID | WBS | Task | Type | Duration | Start | Finish | Predecessors | Baseline start | Baseline finish | Total slack | Resources | Cost | Baseline cost |
| --- | --- | --- | --- | --- | --- | --- | --- | --- | --- | --- | --- | --- | --- |
| 31 | 1.5 | **Contingency reserves** |  | 0d | 2018-01-30 | 2018-01-30 |  | 2018-02-01 | 2018-02-01 | 0d |  | 178,160 | 178,160 |
| 32 | 1.5.1 | Budget Reserve | milestone | 0d | 2018-01-30 | 2018-01-30 | 30FF | 2018-02-01 | 2018-02-01 | 0d | BR | 44,540 | 44,540 |
| 33 | 1.5.2 | Management Reserve | milestone | 0d | 2018-01-30 | 2018-01-30 | 30FF | 2018-02-01 | 2018-02-01 | 0d | MR | 133,620 | 133,620 |
