# MS Project interim 3_B1

Schedule from MS Project, 2016-01-04 to 2018-01-23, status date 2016-10-01, costs in $, A marks actual dates.

## Calendars

- Standard: Mon-Fri 08:00-12:00, 13:00-17:00; Sat-Sun off. Exceptions (off unless hours are given): 2016-05-30 (Memorial Day), 2016-07-04 (Independence Day), 2016-09-05 (Labor Day), 2016-11-24 (Thanksgiving Day), 2016-12-23 to 2016-12-27 (Christmas), 2017-01-02 (New Year), 2017-05-29 (Memorial Day), 2017-07-04 (Independence Day), 2017-09-04 (Labor Day), 2017-11-23 (Thanksgiving Day), 2017-12-25 (Christmas), 2018-01-01 (New Year).

## Resources

| Resource | Group | Rate | Cost per use |
| --- | --- | --- | --- |
| Design | R&D | 100 |  |
| Development | R&D | 70 |  |
| Documentation | R&D | 60 |  |
| Assembly/test | R&D | 70 |  |
| Purchasing | Procurement | 40 |  |
| External Teams |  | 120 |  |
| BR |  |  | 44540 |
| MR |  |  | 133620 |

## Schedule

| ID | WBS | Task | Type | Duration | Start | Finish | Predecessors | Complete | Remaining | Baseline start | Baseline finish | Baseline duration | Total slack | Free slack | Resources | Work | Actual work | Cost | Baseline cost | Actual cost |
| --- | --- | --- | --- | --- | --- | --- | --- | --- | --- | --- | --- | --- | --- | --- | --- | --- | --- | --- | --- | --- |
| 1 | 1 | **Conveyor Belt Project** |  | 523d | 2016-01-04 A | 2018-01-23 |  | 54% | 241.45d | 2016-01-04 | 2018-02-01 | 530d | 0d |  |  | 14256h | 7872h | 1,251,440 | 1,229,360 | 631,600 |
| 2 | 1.1 | **Hardware** |  | 436d | 2016-02-05 A | 2017-10-24 |  | 55% | 197.4d | 2016-02-05 | 2017-11-06 | 445d | 2d |  |  | 4024h | 2224h | 311,680 | 326,400 | 186,880 |
| 3 | 1.1.1 | Start hardware development | milestone | 0d | 2016-02-05 A | 2016-02-05 A | 25 | 100% |  | 2016-02-05 | 2016-02-05 |  |  |  |  |  |  |  |  |  |
| 4 | 1.1.2 | Hardware specifications |  | 45d | 2016-02-09 A | 2016-04-11 A | 3 | 100% |  | 2016-02-08 | 2016-04-15 | 50d |  |  | Development; Design | 720h | 720h | 61,200 | 68,000 | 61,200 |
| 5 | 1.1.3 | Hardware design |  | 67d | 2016-04-13 A | 2016-07-18 A | 4 | 100% |  | 2016-04-18 | 2016-07-26 | 70d |  |  | Design; Development | 1072h | 1072h | 91,120 | 95,200 | 91,120 |
| 6 | 1.1.4 | Hardware Documentation |  | 27d | 2016-07-19 A | 2016-08-24 A | 5 | 100% |  | 2016-07-27 | 2016-09-07 | 30d |  |  | Documentation; Design | 432h | 432h | 34,560 | 38,400 | 34,560 |
| 7 | 1.1.5 | Prototypes |  | 80d | 2016-11-04 | 2017-03-02 | 26 |  |  | 2016-11-17 | 2017-03-15 | 80d | 50d |  | Assembly/test; Development | 1280h |  | 89,600 | 89,600 |  |
| 8 | 1.1.6 | Order circuit boards |  | 5d | 2017-06-19 | 2017-06-23 | 27 |  |  | 2017-06-30 | 2017-07-07 | 5d | 2d | 0d | Purchasing | 40h |  | 1,600 | 1,600 |  |
| 9 | 1.1.7 | Assemble preproduction models |  | 30d | 2017-09-13 | 2017-10-24 | 8FS+50d |  |  | 2017-09-26 | 2017-11-06 | 30d | 2d |  | Assembly/test; Development | 480h |  | 33,600 | 33,600 |  |
| 10 | 1.2 | **Operating system** |  | 436d | 2016-02-08 A | 2017-10-24 |  | 54% | 200.67d | 2016-03-21 | 2017-11-06 | 415d | 2d |  |  | 4904h | 3144h | 353,280 | 333,600 | 230,080 |
| 11 | 1.2.1 | Kernel specifications |  | 25d | 2016-02-08 A | 2016-03-11 A | 25 | 100% |  | 2016-03-21 | 2016-04-15 | 20d |  |  | Design | 200h | 200h | 20,000 | 16,000 | 20,000 |
| 12 | 1.2.2 | **Drivers** |  | 295d | 2016-03-15 A | 2017-05-11 |  | 46% | 159.79d | 2016-04-18 | 2017-05-24 | 280d | 0d |  |  | 2800h | 1760h | 196,000 | 184,800 | 123,200 |
| 13 | 1.2.2.1 | Disk drivers |  | 110d | 2016-03-15 A | 2016-08-17 A | 11 | 100% |  | 2016-04-18 | 2016-09-07 | 100d |  |  | Assembly/test; Development | 1760h | 1760h | 123,200 | 112,000 | 123,200 |
| 14 | 1.2.2.2 | Serial I/O drivers |  | 130d | 2016-11-04 | 2017-05-11 | 26 |  |  | 2016-11-17 | 2017-05-24 | 130d | 0d |  | Development | 1040h |  | 72,800 | 72,800 |  |
| 15 | 1.2.3 | Memory management |  | 98d | 2016-03-15 A | 2016-08-01 A | 11 | 100% |  | 2016-04-18 | 2016-08-23 | 90d |  |  | Development | 784h | 784h | 54,880 | 50,400 | 54,880 |
| 16 | 1.2.4 | Operating system documentation |  | 25d | 2016-03-15 A | 2016-04-18 A | 11 | 100% |  | 2016-05-16 | 2016-06-20 | 25d |  |  | Design; Documentation | 400h | 400h | 32,000 | 32,000 | 32,000 |
| 17 | 1.2.5 | Network interface |  | 90d | 2017-06-19 | 2017-10-24 | 27 |  |  | 2017-06-30 | 2017-11-06 | 90d | 2d |  | Development | 720h |  | 50,400 | 50,400 |  |
| 18 | 1.3 | **Utilities** |  | 417d | 2016-03-08 A | 2017-10-26 |  | 77% | 96.98d | 2016-02-08 | 2017-11-06 | 445d | 0d |  |  | 2368h | 1888h | 199,120 | 182,000 | 165,520 |
| 19 | 1.3.1 | Utilities specifications |  | 16d | 2016-03-08 A | 2016-03-29 A | 25 | 100% |  | 2016-02-08 | 2016-02-26 | 15d |  |  | Development; Design | 256h | 256h | 21,760 | 20,400 | 21,760 |
| 20 | 1.3.2 | Routine utilities |  | 65d | 2016-04-26 A | 2016-07-27 A | 19 | 100% |  | 2016-02-29 | 2016-05-20 | 60d |  |  | External Teams | 520h | 520h | 62,400 | 57,600 | 62,400 |
| 21 | 1.3.3 | Complex utilities |  | 95d | 2016-03-30 A | 2016-08-11 A | 19 | 100% |  | 2016-05-16 | 2016-09-07 | 80d |  |  | Development | 760h | 760h | 53,200 | 44,800 | 53,200 |
| 22 | 1.3.4 | Utilities documentation |  | 22d | 2016-05-03 A | 2016-06-02 A | 19 | 100% |  | 2016-04-18 | 2016-05-13 | 20d |  |  | Documentation; Design | 352h | 352h | 28,160 | 25,600 | 28,160 |
| 23 | 1.3.5 | Shell |  | 60d | 2017-08-03 | 2017-10-26 | 27 |  |  | 2017-08-14 | 2017-11-06 | 60d | 0d |  | Development | 480h |  | 33,600 | 33,600 |  |
| 24 | 1.4 | **System integration** |  | 523d | 2016-01-04 A | 2018-01-23 |  | 24% | 395.99d | 2016-01-04 | 2018-02-01 | 530d | 0d |  |  | 2960h | 616h | 209,200 | 209,200 | 49,120 |
| 25 | 1.4.1 | Architectural decisions |  | 25d | 2016-01-04 A | 2016-02-05 A |  | 100% |  | 2016-01-04 | 2016-02-05 | 25d |  |  | Design | 200h | 200h | 20,000 | 20,000 | 20,000 |
| 26 | 1.4.2 | Integration first phase |  | 50d | 2016-08-25 A | 2016-11-03 | 13, 15, 16, 20, 21, 22, 6 | 52% | 24d | 2016-09-08 | 2016-11-16 | 50d | 0d |  | Assembly/test; Development | 800h | 416h | 56,000 | 56,000 | 29,120 |
| 27 | 1.4.3 | System hard/software test |  | 25d | 2017-05-12 | 2017-06-16 | 14, 7 |  |  | 2017-05-25 | 2017-06-29 | 25d | 0d |  | Assembly/test | 200h |  | 14,000 | 14,000 |  |
| 28 | 1.4.4 | Project documentation |  | 50d | 2017-08-17 | 2017-10-26 | 27 |  |  | 2017-08-28 | 2017-11-06 | 50d | 0d |  | Documentation; Development | 800h |  | 52,000 | 52,000 |  |
| 29 | 1.4.5 | Integration acceptance testing |  | 60d | 2017-10-27 | 2018-01-23 | 17, 23, 28, 9 |  |  | 2017-11-07 | 2018-02-01 | 60d | 0d |  | Assembly/test; Development | 960h |  | 67,200 | 67,200 |  |
| 30 | 1.4.6 | Complete system integration | milestone | 0d | 2018-01-23 | 2018-01-23 | 29 |  |  | 2018-02-01 | 2018-02-01 |  | 0d |  |  |  |  |  |  |  |

| ID | WBS | Task | Type | Duration | Start | Finish | Predecessors | Baseline start | Baseline finish | Total slack | Resources | Cost | Baseline cost |
| --- | --- | --- | --- | --- | --- | --- | --- | --- | --- | --- | --- | --- | --- |
| 31 | 1.5 | **Contingency reserves** |  | 0d | 2018-01-23 | 2018-01-23 |  | 2018-02-01 | 2018-02-01 | 0d |  | 178,160 | 178,160 |
| 32 | 1.5.1 | Budget Reserve | milestone | 0d | 2018-01-23 | 2018-01-23 | 30FF | 2018-02-01 | 2018-02-01 | 0d | BR | 44,540 | 44,540 |
| 33 | 1.5.2 | Management Reserve | milestone | 0d | 2018-01-23 | 2018-01-23 | 30FF | 2018-02-01 | 2018-02-01 | 0d | MR | 133,620 | 133,620 |
